# 3.4线上看病估算持续时间

Schedule from MS Project, 2020-03-02 to 2020-08-04, costs in ¥.

## Calendars

- 标准: Mon-Fri 08:00-12:00, 13:00-17:00; Sat-Sun off. Exceptions (off unless hours are given): 2020-05-10 08:00-12:00, 13:00-17:00.

## Resources

| Resource |
| --- |
| 项目经理 |
| UI专家 |
| 需求专家 |
| 质量专家 |
| aa |
| 设计专家 |
| 程序员1 |
| 程序员2 |
| 程序员3 |
| 测试员1 |
| 人力专家 |
| 采购专家 |
| 风险专家 |
| 储备资金 |
| 间接成本 |

## Schedule

| ID | WBS | Task | Duration | Start | Finish | Predecessors | Total slack | Constraint | Resources | Work | Cost |
| --- | --- | --- | --- | --- | --- | --- | --- | --- | --- | --- | --- |
| 1 | 1 | **启动** | 7d | 2020-03-02 | 2020-03-10 |  | 0d |  | 间接成本 [0.1%]; 储备资金 [0.1%] | 136h | 10,280 |
| 2 | 1.1 | 组建核心团队 | 2d | 2020-03-02 | 2020-03-03 |  | 3d |  | UI专家; 项目经理; 设计专家; 需求专家; 质量专家 | 80h | 4,160 |
| 3 | 1.2 | 干系人利益 | 1d | 2020-03-04 | 2020-03-04 |  | 2d | start no earlier than 2020-03-04 | 项目经理 | 8h | 480 |
| 4 | 1.3 | 里程碑计划 | 1d | 2020-03-05 | 2020-03-05 |  | 1d | start no earlier than 2020-03-05 | 项目经理 | 8h | 480 |
| 5 | 1.4 | 制定项目章程 | 1d | 2020-03-09 | 2020-03-09 | 2, 3, 4 | 0d | as late as possible | 项目经理 | 8h | 480 |
| 6 | 1.5 | 项目启动大会 | 1d | 2020-03-10 | 2020-03-10 | 5 | 0d | as late as possible | UI专家; 项目经理; 需求专家; 质量专家 | 32h | 1,680 |
| 7 | 2 | **规划** | 48d? | 2020-03-11 | 2020-05-14 |  | 0d |  | 储备资金 [0.1%]; 间接成本 [0.1%] | 280.64h | 17,385.6 |
| 8 | 2.1 | **规划范围** | 36d | 2020-03-11 | 2020-04-29 |  | 0d |  |  | 120.64h | 6,425.6 |
| 9 | 2.1.1 | 制定需求说明书 | 2d | 2020-03-11 | 2020-03-12 | 6 | 0d | as late as possible | 需求专家 | 16h | 800 |
| 10 | 2.1.2 | 界面设计 | 4d | 2020-03-13 | 2020-03-18 | 9 | 0d | as late as possible | UI专家; aa [2%] | 32.64h | 1,625.6 |
| 11 | 2.1.3 | 详细设计说明书 | 4d | 2020-03-13 | 2020-03-18 | 9 | 0d | as late as possible | 设计专家 | 32h | 1,600 |
| 12 | 2.1.4 | 范围说明书 | 3d | 2020-03-16 | 2020-03-18 | 9 | 0d | as late as possible | 项目经理 | 24h | 1,440 |
| 13 | 2.1.5 | 创建WBS | 1d | 2020-03-19 | 2020-03-19 | 10, 11, 12 | 0d | start no later than 2020-03-19 | 项目经理 | 8h | 480 |
| 14 | 2.1.6 | 形成范围基准 | 1d | 2020-04-29 | 2020-04-29 | 13 | 0d | as late as possible | 项目经理 | 8h | 480 |
| 15 | 2.2 | **规划时间** | 5d | 2020-04-30 | 2020-05-06 |  | 0d |  |  | 40h | 2,400 |
| 16 | 2.2.1 | 排列工作包顺序 | 1d | 2020-04-30 | 2020-04-30 | 14 | 0d | as late as possible | 项目经理 | 8h | 480 |
| 17 | 2.2.2 | 估算资源 | 1d | 2020-05-01 | 2020-05-01 | 16 | 0d | as late as possible | 项目经理 | 8h | 480 |
| 18 | 2.2.3 | 估算持续时间 | 1d | 2020-05-04 | 2020-05-04 | 17 | 0d | as late as possible | 项目经理 | 8h | 480 |
| 19 | 2.2.4 | 制定进度计划 | 1d | 2020-05-05 | 2020-05-05 | 18 | 0d | as late as possible | 项目经理 | 8h | 480 |
| 20 | 2.2.5 | 形成进度基准 | 1d | 2020-05-06 | 2020-05-06 | 19 | 0d | as late as possible | 项目经理 | 8h | 480 |
| 21 | 2.3 | **规划成本** | 3d | 2020-05-07 | 2020-05-10 |  | 0d |  |  | 24h | 1,440 |
| 22 | 2.3.1 | 项目成本估算 | 1d | 2020-05-07 | 2020-05-07 | 20 | 0d | as late as possible | 项目经理 | 8h | 480 |
| 23 | 2.3.2 | 项目预算 | 1d | 2020-05-08 | 2020-05-08 | 22 | 0d | as late as possible | 项目经理 | 8h | 480 |
| 24 | 2.3.3 | 形成范围基准 | 1d | 2020-05-10 | 2020-05-10 | 23 | 0d | as late as possible | 项目经理 | 8h | 480 |

| ID | WBS | Task | Type | Duration | Start | Finish | Predecessors | Total slack | Free slack | Constraint | Resources | Work | Cost |
| --- | --- | --- | --- | --- | --- | --- | --- | --- | --- | --- | --- | --- | --- |
| 25 | 2.4 | **规划质量** |  | 3d | 2020-05-07 | 2020-05-10 |  | 0d |  |  |  | 24h | 1,200 |
| 26 | 2.4.1 | 制定测试计划 |  | 1d | 2020-05-07 | 2020-05-07 | 14 | 0d |  | as late as possible | 质量专家 | 8h | 400 |
| 27 | 2.4.2 | 制定测试用例 |  | 2d | 2020-05-08 | 2020-05-10 | 26 | 0d |  | as late as possible | 质量专家 | 16h | 800 |
| 28 | 2.5 | **规划人力资源** |  | 6d? | 2020-05-04 | 2020-05-10 |  | 0d |  |  |  | 16h | 800 |
| 29 | 2.5.1 | 制定人力资源计划 |  | 1d? | 2020-05-04 | 2020-05-04 | 17 | 4d |  | start no later than 2020-06-30 | 人力专家 | 8h | 400 |
| 30 | 2.5.2 | 制定人员分配管理计划 |  | 1d? | 2020-05-10 | 2020-05-10 | 29 | 0d |  | as late as possible | 人力专家 | 8h | 400 |
| 31 | 2.6 | **规划沟通** |  | 1d? | 2020-05-10 | 2020-05-10 |  |  |  |  |  | 8h | 480 |
| 32 | 2.6.1 | 制定沟通管理计划 |  | 1d? | 2020-05-10 | 2020-05-10 |  | 0d |  | as late as possible | 项目经理 | 8h | 480 |
| 33 | 2.7 | **规划采购** |  | 2d | 2020-05-10 | 2020-05-11 |  |  |  |  |  | 16h | 800 |
| 34 | 2.7.1 | 自制外购分析 |  | 1d? | 2020-05-10 | 2020-05-10 | 17 | 0d |  | as late as possible | 采购专家 | 8h | 400 |
| 35 | 2.7.2 | 制定采购文件 |  | 1d? | 2020-05-11 | 2020-05-11 | 34 | 0d |  | as late as possible | 采购专家 | 8h | 400 |
| 36 | 2.8 | **规划风险** |  | 3d? | 2020-05-11 | 2020-05-13 |  | 0d |  |  |  | 24h | 1,360 |
| 37 | 2.8.1 | 识别风险 |  | 1d? | 2020-05-11 | 2020-05-11 | 15, 21, 25, 28 | 0d |  | as late as possible | 项目经理 | 8h | 480 |
| 38 | 2.8.2 | 风险分析 |  | 1d? | 2020-05-12 | 2020-05-12 | 37 | 0d |  | as late as possible | 项目经理 | 8h | 480 |
| 39 | 2.8.3 | 制定风险登记册 |  | 1d? | 2020-05-13 | 2020-05-13 | 38 | 0d |  | as late as possible | 风险专家 | 8h | 400 |
| 40 | 2.9 | 规划整合 |  | 1d? | 2020-05-14 | 2020-05-14 | 39 | 0d |  | as late as possible | 项目经理 | 8h | 480 |
| 41 | 3 | **执行与监控** |  | 58d? | 2020-05-15 | 2020-08-04 |  | 0d |  |  | 储备资金 [0.1%]; 间接成本 [0.1%] | 1480h | 66,800 |
| 42 | 3.1 | 组建项目团队 |  | 1d? | 2020-05-15 | 2020-05-15 | 7 | 0d |  | as late as possible |  |  |  |
| 43 | 3.2 | **项目执行** |  | 45d | 2020-05-18 | 2020-07-17 |  | 0d |  |  |  | 624h | 24,960 |
| 44 | 3.2.1 | **病人模块** |  | 45d | 2020-05-18 | 2020-07-17 |  | 0d |  |  |  | 320h | 12,800 |
| 45 | 3.2.1.1 | 注册登录 |  | 5d | 2020-05-18 | 2020-05-22 | 42 | 0d |  | finish no earlier than 2020-04-16 | 程序员1 | 40h | 1,600 |
| 46 | 3.2.1.2 | 首页 |  | 6d | 2020-05-25 | 2020-06-01 | 45 | 0d |  | finish no earlier than 2020-04-24 | 程序员1 | 48h | 1,920 |
| 47 | 3.2.1.3 | 预约医生看病 |  | 9d | 2020-06-02 | 2020-06-12 | 46 | 0d |  | finish no earlier than 2020-06-09 | 程序员1 | 72h | 2,880 |
| 48 | 3.2.1.4 | 买药 |  | 5d | 2020-06-24 | 2020-06-30 | 47 | -2d | 0d | start no earlier than 2020-05-11 | 程序员1 | 40h | 1,600 |
| 49 | 3.2.1.5 | 搜索 |  | 5d | 2020-07-02 | 2020-07-08 | 48 | -2d | 0d | start no earlier than 2020-05-19 | 程序员1 | 40h | 1,600 |
| 50 | 3.2.1.6 | 个人中心 | manual | 10d | 2020-07-06 | 2020-07-17 | 49 |  |  | start no earlier than 2020-05-28 | 程序员1 | 80h | 3,200 |

| ID | WBS | Task | Type | Duration | Start | Finish | Predecessors | Total slack | Free slack | Constraint | Resources | Work | Cost |
| --- | --- | --- | --- | --- | --- | --- | --- | --- | --- | --- | --- | --- | --- |
| 51 | 3.2.2 | **医生模块** |  | 25d | 2020-05-18 | 2020-06-19 |  | 21d |  |  |  | 160h | 6,400 |
| 52 | 3.2.2.1 | 注册登录 |  | 5d | 2020-05-18 | 2020-05-22 | 42 | 29d | 0d | start no earlier than 2020-05-13 | 程序员2 | 40h | 1,600 |
| 53 | 3.2.2.2 | 首页 |  | 6d | 2020-05-25 | 2020-06-01 | 52 | 29d | 0d | start no earlier than 2020-05-20 | 程序员2 | 48h | 1,920 |
| 54 | 3.2.2.3 | 个人信息 |  | 6d | 2020-06-02 | 2020-06-09 | 53 | 29d |  | start no earlier than 2020-05-28 | 程序员2 | 48h | 1,920 |
| 55 | 3.2.2.4 | 给病人看病 |  | 3d | 2020-06-08 | 2020-06-19 |  | 21d | 20d | start no earlier than 2020-06-08 | 程序员2 | 24h | 960 |
| 56 | 3.2.3 | **管理员模块** |  | 15d | 2020-05-18 | 2020-06-05 |  | 31d |  |  |  | 144h | 5,760 |
| 57 | 3.2.3.1 | 审核医生 |  | 6d | 2020-05-18 | 2020-05-25 | 42 | 40d |  | start no earlier than 2020-05-13 | 程序员3 | 48h | 1,920 |
| 58 | 3.2.3.2 | 更新医生，病人，药品等信息 |  | 6d | 2020-05-21 | 2020-05-28 | 42 | 37d |  | start no earlier than 2020-05-21 | 程序员3 | 48h | 1,920 |
| 59 | 3.2.3.3 | 数据备份 |  | 6d | 2020-05-29 | 2020-06-05 | 42 | 31d |  | start no earlier than 2020-05-29 | 程序员3 | 48h | 1,920 |
| 60 | 3.3 | **项目监控** |  | 4d | 2020-07-30 | 2020-08-04 |  | 0d |  |  |  | 104h | 4,800 |
| 61 | 3.3.1 | 各项指标监控 |  | 1d | 2020-07-30 | 2020-07-30 | 42 | 0d |  | as late as possible | 测试员1 | 8h | 320 |
| 62 | 3.3.2 | 监控评审 | manual | 1d | 2020-07-31 | 2020-07-31 | 61 |  |  | as late as possible | 质量专家 | 8h | 400 |
| 63 | 3.3.3 | 变更评审 | manual | 1d | 2020-08-04 | 2020-08-04 | 62 |  |  | as late as possible | 质量专家 | 8h | 400 |
| 64 | 3.3.4 | 例会 |  | 1d | 2020-08-04 | 2020-08-04 | 42 | 0d |  | as late as possible | aa; UI专家; 测试员1; 程序员1; 程序员2; 程序员3; 设计专家; 项目经理; 需求专家; 质量专家 | 80h | 3,680 |
| 65 | 3.4 | **管理干系人** |  | 1d | 2020-08-04 | 2020-08-04 |  | 0d |  |  |  | 24h | 1,440 |
| 66 | 3.4.1 | 发布项目信息 |  | 1d | 2020-08-04 | 2020-08-04 | 42 | 0d |  | as late as possible | 项目经理 | 8h | 480 |
| 67 | 3.4.2 | 报告监控指标 |  | 1d | 2020-08-04 | 2020-08-04 | 42 | 0d |  | as late as possible | 项目经理 | 8h | 480 |
| 68 | 3.4.3 | 干系人沟通 |  | 1d | 2020-08-04 | 2020-08-04 | 42 | 0d |  | as late as possible | 项目经理 | 8h | 480 |
| 69 | 3.5 | **团队建设** |  | 40d | 2020-06-10 | 2020-08-04 |  | 0d |  |  |  | 728h | 33,600 |
| 70 | 3.5.1 | 培训 |  | 6d | 2020-06-10 | 2020-06-17 | 42 | 34d |  | finish no earlier than 2020-06-17 | aa; UI专家; 测试员1; 程序员1; 程序员2; 程序员3; 设计专家; 项目经理; 需求专家; 质量专家 | 480h | 22,080 |
| 71 | 3.5.2 | 娱乐活动 |  | 1d | 2020-06-18 | 2020-06-18 | 42 | 33d |  | start no earlier than 2020-06-18 | aa; UI专家; 测试员1; 程序员1; 程序员2; 程序员3; 设计专家; 项目经理; 需求专家; 质量专家 | 80h | 3,680 |
| 72 | 3.5.3 | 沟通 |  | 1d | 2020-08-04 | 2020-08-04 | 42 | 0d |  | as late as possible | aa; UI专家; 测试员1; 程序员1; 程序员2; 程序员3; 设计专家; 项目经理; 需求专家; 质量专家 | 80h | 3,680 |
| 73 | 3.5.4 | 采购 |  | 1d | 2020-08-04 | 2020-08-04 | 42 | 0d |  | as late as possible | 项目经理 | 8h | 480 |
| 74 | 3.5.5 | 项目验收 |  | 1d | 2020-07-21 | 2020-07-21 | 43 | 0d |  | as late as possible | aa; UI专家; 测试员1; 程序员1; 程序员2; 程序员3; 设计专家; 项目经理; 需求专家; 质量专家 | 80h | 3,680 |

| ID | WBS | Task | Duration | Start | Finish | Predecessors | Total slack | Constraint | Resources | Work | Cost |
| --- | --- | --- | --- | --- | --- | --- | --- | --- | --- | --- | --- |
| 75 | 4 | **收尾** | 10d | 2020-07-22 | 2020-08-04 |  | 0d |  | 储备资金 [0.1%]; 间接成本 [0.1%] | 640h | 31,600 |
| 76 | 4.1 | 项目终验 | 10d | 2020-07-22 | 2020-08-04 | 74 | 0d | as late as possible | aa; UI专家; 程序员1; 程序员2; 程序员3; 设计专家; 项目经理; 需求专家 | 640h | 29,600 |
